# Lime_Plant_Project

Schedule from MS Project, 2026-02-04 to 2026-05-29.

## Calendars

- Standard: Mon-Fri 08:00-12:00, 13:00-17:00; Sat-Sun off.

## Resources

| Resource |
| --- |
| ddfd |

## Schedule

| ID | WBS | Task | Duration | Start | Finish | Predecessors | Total slack | Free slack | Constraint |
| --- | --- | --- | --- | --- | --- | --- | --- | --- | --- |
| 1 | 1 | Plant Analysis | 1d | 2026-02-17 | 2026-02-17 |  | 48d |  | start no earlier than 2026-02-17 |
| 2 | 2 | North Plant Pneumatic Conduit Repair | 1d | 2026-02-04 | 2026-02-04 |  | 69d |  |  |
| 3 | 3 | North/South Plant Control Engineering | 23d | 2026-02-18 | 2026-03-20 |  | 6.4d | 0d | start no earlier than 2026-02-18 |
| 4 | 4 | South Plant HMI Removal and Repair | 30d | 2026-03-23 | 2026-05-01 |  | 20d |  | start no earlier than 2026-03-23 |
| 5 | 5 | **North Plant Cold Commissioning** | 4.3d | 2026-03-23 | 2026-03-27 | 3 | 6.4d | 0d |  |
| 6 | 5.1 | Power Up | 0.1d | 2026-03-23 | 2026-03-23 |  | 8.4d | 0d |  |
| 7 | 5.2 | PLC/HMI Project Upload For Backup | 0.1d | 2026-03-23 | 2026-03-23 | 6 | 8.4d | 0d |  |
| 8 | 5.3 | New PLC/HMI Project Download | 0.1d | 2026-03-23 | 2026-03-23 | 7 | 8.4d | 0d |  |
| 9 | 5.4 | Field Instrument Loop Checks incl. HART Protocol Testing | 2d | 2026-03-23 | 2026-03-25 | 8 | 8.4d | 0d |  |
| 10 | 5.5 | Documentation | 2d | 2026-03-25 | 2026-03-27 | 9 | 8.4d |  |  |
| 11 | 6 | **North Plant Maintenance** | 5d | 2026-03-27 | 2026-04-03 | 5 | 6.4d | 0d |  |
| 12 | 6.1 | Valve Visual Inspection | 1d | 2026-03-27 | 2026-03-30 |  | 8.4d | 0d |  |
| 13 | 6.2 | Leak/Seal Check | 1d | 2026-03-30 | 2026-03-31 | 12 | 8.4d | 0d |  |
| 14 | 6.3 | Valve and Pump Lubrication | 1d | 2026-03-31 | 2026-04-01 | 13 | 8.4d | 0d |  |
| 15 | 6.4 | Housekeeping | 2d | 2026-04-01 | 2026-04-03 | 14 | 8.4d |  |  |
| 16 | 6.5 | Documentation | 1d | 2026-03-27 | 2026-03-30 |  | 12.4d |  |  |
| 17 | 7 | **North Plant Hot Commissioning** | 4.3d | 2026-04-03 | 2026-04-09 | 11 | 6.4d | 0d |  |
| 18 | 7.1 | Motor Bump Tests | 0.1d | 2026-04-03 | 2026-04-03 |  | 11.4d | 0d |  |
| 19 | 7.2 | Valve Actuation | 0.1d | 2026-04-03 | 2026-04-03 | 18 | 8.4d | 0d |  |
| 20 | 7.3 | Interlocks and E-Stops | 0.1d | 2026-04-03 | 2026-04-03 | 19 | 8.4d | 0d |  |
| 21 | 7.4 | Alarm Tests | 1d | 2026-04-03 | 2026-04-06 | 20 | 8.4d | 0d |  |
| 22 | 7.5 | Process Sequences | 2d | 2026-04-06 | 2026-04-08 | 21 | 8.4d | 0d |  |
| 23 | 7.6 | Documentation | 1d | 2026-04-08 | 2026-04-09 | 22 | 8.4d |  |  |
| 24 | 8 | **North Plant Process Commissioning** | 5d | 2026-04-09 | 2026-04-16 | 17 | 6.4d | 0d |  |
| 25 | 8.1 | Live Process Test | 2d | 2026-04-09 | 2026-04-13 |  | 8.4d | 0d |  |
| 26 | 8.2 | Loop Tuning | 2d | 2026-04-13 | 2026-04-15 | 25 | 8.4d | 0d |  |
| 27 | 8.3 | Documentation | 1d | 2026-04-15 | 2026-04-16 | 26 | 8.4d |  |  |

| ID | WBS | Task | Duration | Start | Finish | Predecessors | Total slack | Free slack | Constraint |
| --- | --- | --- | --- | --- | --- | --- | --- | --- | --- |
| 28 | 9 | **Handover And Training** | 5d | 2026-04-16 | 2026-04-23 | 24 | 6.4d | 0d |  |
| 29 | 9.1 | Handover | 1d | 2026-04-16 | 2026-04-17 |  | 8.4d | 0d |  |
| 30 | 9.2 | Training | 3d | 2026-04-17 | 2026-04-22 | 29 | 11.4d | 0d |  |
| 31 | 9.3 | Documentation | 1d | 2026-04-22 | 2026-04-23 | 30 | 11.4d |  |  |
| 32 | 10 | **South Plant Maintenance** | 13.4d | 2026-04-23 | 2026-05-12 | 28 | 0d |  |  |
| 33 | 10.1 | Point to Point Checks | 6d | 2026-04-23 | 2026-05-01 |  | 11.4d | 0d |  |
| 34 | 10.2 | Valve Visual Inspection | 1d | 2026-05-01 | 2026-05-04 | 33 | 11.4d |  |  |
| 35 | 10.3 | Leak/Seal Checks | 1d | 2026-04-30 | 2026-04-30 | 12 | 5d | 0d | start no earlier than 2026-04-30 |
| 36 | 10.4 | Valve and Pump Lubrication | 3d | 2026-05-01 | 2026-05-05 | 35 | 5d |  |  |
| 37 | 10.5 | Housekeeping | 4d | 2026-05-05 | 2026-05-08 | 14 | 2d |  | start no earlier than 2026-05-05 |
| 38 | 10.6 | Documentation | 2d | 2026-05-11 | 2026-05-12 | 15 | 0d |  | start no earlier than 2026-05-11 |
| 39 | 11 | **South Plant Cold Commissioning** | 2d | 2026-05-13 | 2026-05-14 | 32, 4 | 0d |  |  |
| 40 | 11.1 | Power Up | 0.1d | 2026-05-13 | 2026-05-13 |  | 1.9d |  |  |
| 41 | 11.2 | PLC/HMI Project Upload For Backup | 0.1d | 2026-05-13 | 2026-05-13 |  | 1.9d |  |  |
| 42 | 11.3 | New PLC/HMI Project Download | 0.1d | 2026-05-13 | 2026-05-13 |  | 1.9d |  |  |
| 43 | 11.4 | Field Instrument Loop Checks incl. HART Protocol Testing | 2d | 2026-05-13 | 2026-05-14 |  | 0d |  |  |
| 44 | 11.5 | Documentation | 2d | 2026-05-13 | 2026-05-14 |  | 0d |  |  |
| 45 | 12 | **South Plant Hot Commissioning** | 3d | 2026-05-15 | 2026-05-19 | 39 | 0d |  |  |
| 46 | 12.1 | Motor Bump Tests | 1d | 2026-05-15 | 2026-05-15 |  | 0d |  |  |
| 47 | 12.2 | Valve Actuation | 1d | 2026-05-15 | 2026-05-15 | 18 | 2d |  | start no earlier than 2026-04-30 |
| 48 | 12.3 | Interlocks and E-Stops | 1d | 2026-05-18 | 2026-05-18 | 46 | 0d |  | start no earlier than 2026-05-01 |
| 49 | 12.4 | Alarm Cause and Effect Tests | 1d | 2026-05-19 | 2026-05-19 | 48 | 0d |  |  |
| 50 | 12.5 | Process Sequences | 2d | 2026-05-15 | 2026-05-18 |  | 0d |  | start no earlier than 2026-05-06 |
| 51 | 12.6 | Documentation | 1d | 2026-05-19 | 2026-05-19 | 50 | 0d |  |  |

| ID | WBS | Task | Duration | Start | Finish | Predecessors | Total slack |
| --- | --- | --- | --- | --- | --- | --- | --- |
| 52 | 13 | **South Plant Process Commissioning** | 2d | 2026-05-20 | 2026-05-21 | 45 | 0d |
| 53 | 13.1 | Live Process Test | 2d | 2026-05-20 | 2026-05-21 |  | 0d |
| 54 | 13.2 | Loop Tuning | 2d | 2026-05-20 | 2026-05-21 |  | 0d |
| 55 | 13.3 | Documentation | 1d | 2026-05-20 | 2026-05-20 |  | 1d |
| 56 | 14 | **Handover And Training** | 6d | 2026-05-22 | 2026-05-29 | 52 |  |
| 57 | 14.1 | Handover | 1d | 2026-05-22 | 2026-05-22 |  | 5d |
| 58 | 14.2 | Training | 6d | 2026-05-22 | 2026-05-29 |  | 0d |
| 59 | 14.3 | Documentation | 1d | 2026-05-22 | 2026-05-22 |  | 5d |
